# cronograma cartografia V2

Schedule from MS Project, 2025-10-01 to 2027-04-30, A marks actual dates.
InKulpado666

## Calendars

- Estándar: Mon-Fri 09:00-13:00, 15:00-19:00; Sat-Sun off.

## Schedule

| ID | WBS | Task | Type | Duration | Start | Finish | Complete | Remaining | Actual start | Total slack | Responsables |
| --- | --- | --- | --- | --- | --- | --- | --- | --- | --- | --- | --- |
| 2 | 1 | **FASE I - Preparación y Diseño de Estructura** |  | 90d | 2026-02-09 A | 2026-06-12 | 54% | 41.68d |  |  | Denise-Vladimir-Abraham |
| 3 | 1.1 | Diseño y definición de la estructura de tablas (marco referencial,marco censal) | manual | 6d | 2026-02-09 A | 2026-02-16 A | 100% |  |  |  | equipo de informatica |
| 4 | 1.2 | Creación de tablas según diccionario de datos | manual | 7d | 2026-02-17 A | 2026-02-25 A | 100% |  |  |  | equipo de informatica |
| 5 | 1.3 | Creacion de tablas (marco censal) | manual | 2d | 2026-02-26 A | 2026-02-27 A | 100% |  |  |  | equipo de informatica |
| 6 | 1.4 | Poblacion y Migracion de datos marco referencial | manual | 80d | 2026-02-23 A | 2026-06-12 | 45% | 44d |  |  | equipo de informatica - Cartografia |
| 7 | 2 | **FASE II - Recopilación y Preparación de Insumos** |  | 20d | 2026-02-09 | 2026-03-06 | 75% | 5d | 2025-10-01 |  | Denise-Vladimir-Abraham |
| 8 | 2.1 | Recepción de capas del Censo Agropecuario 2013 | manual | 6d | 2026-02-09 A | 2026-02-16 | 83% | 1d |  |  | equipo de cartografía |
| 9 | 2.2 | Recepción de capas del CNPV 2012 | manual | 1d | 2025-10-01 A | 2025-10-01 A | 100% |  |  |  | equipo de cartografía |
| 10 | 2.3 | Recepción de capas de ACE 2023 | manual | 2d | 2026-02-09 A | 2026-02-10 A | 100% |  |  |  | equipo de cartografía |
| 11 | 2.4 | Recepción de capas del CPV 2024 | manual | 10d | 2026-02-09 A | 2026-02-20 A | 100% |  |  |  | equipo de cartografía |
| 12 | 2.5 | Organización de capas y particionamiento en esquemas | manual | 5d | 2026-03-02 A | 2026-03-06 | 40% | 3d |  |  | equipo de informatica |
| 13 | 2.6 | Pruebas de conectividad desde QGIS | manual | 5d | 2026-02-09 A | 2026-02-13 A | 100% |  |  |  | equipo de informatica |
| 14 | 2.7 | Documentación de estructura marco referencial | manual | 5d | 2026-03-02 A | 2026-03-06 | 10% | 4.5d |  |  | equipo de informatica |
| 15 | 3 | **FASE III - Construcción de APAs** |  | 23d | 2026-02-18 A | 2026-03-20 | 49% | 11.75d |  | 0d | Abraham-Ronald-David-Reynaldo |
| 16 | 3.1 | Ajuste a predios 2024 (disperso) | manual | 2d | 2026-02-18 A | 2026-02-19 A | 100% |  |  |  | equipo de cartografía |
| 17 | 3.2 | Validación de geometrías | manual | 6d | 2026-02-20 A | 2026-02-27 A | 100% |  |  |  | equipo de cartografía |
| 18 | 3.3 | clasificacion de comunidades insulares y fragmentadas | manual | 15d | 2026-03-02 A | 2026-03-20 | 22% | 11.75d |  |  | equipo de cartografía |
| 19 | 4 | **FASE IV - Prueba Experimental Focalizadas por areas (1ra Prueba - comunidades cercanas)** |  | 24d | 2026-03-10 | 2026-04-10 |  |  |  |  | Abraham-Ronald-David-Reynaldo-Sergio-Cesar-Mauricio |
| 20 | 4.1 | Elección de Comunidades | manual | 3d | 2026-03-10 | 2026-03-12 |  |  |  |  | equipo de cartografía-operativo de campo-tematica |
| 21 | 4.2 | Aprobación de selección de Comunidades | manual | 2d | 2026-03-13 | 2026-03-16 |  |  |  |  |  |
| 22 | 4.3 | generación de sectores y areas censales (area dispersa) | manual | 2d | 2026-03-13 | 2026-03-16 |  |  |  |  | equipo de cartografía |
| 23 | 4.4 | generación de sectores y areas censales (area amanzanada) | manual | 2d | 2026-03-13 | 2026-03-16 |  |  |  |  | equipo de cartografía |
| 24 | 4.5 | decarga de imágenes | manual | 1d | 2026-03-13 | 2026-03-13 |  |  |  |  | equipo de cartografía |
| 25 | 4.6 | solicitud emergentes por operativo (pre - operativo) | manual | 2d | 2026-03-16 | 2026-03-17 |  |  |  |  | equipo de cartografía |
| 26 | 4.7 | seguimiento de la informacion cartografica | manual | 3d | 2026-04-06 | 2026-04-08 |  |  |  |  | equipo de cartografía |
| 27 | 4.8 | solicitud emergentes por operativo (durante el operativo) | manual | 3d | 2026-04-06 | 2026-04-08 |  |  |  |  | equipo de cartografía |
| 28 | 4.9 | evaluación de la información cartografica | manual | 2d | 2026-04-09 | 2026-04-10 |  |  |  |  | equipo de cartografía |

| ID | WBS | Task | Type | Duration | Start | Finish | Total slack | Responsables |
| --- | --- | --- | --- | --- | --- | --- | --- | --- |
| 29 | 5 | **FASE V - PRUEBA EXPERIMENTAL TOTAL (3 comunidades solo en La Paz de distintos Municipios)** |  | 27d | 2026-04-20 | 2026-05-26 | 0d | Abraham-Ronald-David-Reynaldo-Sergio-Cesar-Mauricio |
| 30 | 5.1 | Elección de Comunidades | manual | 3d | 2026-04-20 | 2026-04-22 |  | equipo de cartografía-operativo de campo-tematica |
| 31 | 5.2 | Aprobación de selección de Comunidades | manual | 1d | 2026-04-23 | 2026-04-23 |  |  |
| 32 | 5.3 | generación de sectores y areas censales (area dispersa) | manual | 3d | 2026-04-24 | 2026-04-28 |  | equipo de cartografía |
| 33 | 5.4 | generación de sectores y areas censales (area amanzanada) | manual | 3d | 2026-04-24 | 2026-04-28 |  | equipo de cartografía |
| 34 | 5.5 | decarga de imágenes | manual | 1d | 2026-04-27 | 2026-04-27 |  | equipo de cartografía |
| 35 | 5.6 | solicitud emergentes por operativo (pre - operativo) | manual | 1d | 2026-04-28 | 2026-04-28 |  | equipo de cartografía |
| 36 | 5.7 | seguimiento de la informacion cartografica | manual | 5d | 2026-05-18 | 2026-05-22 |  | equipo de cartografía |
| 37 | 5.8 | solicitud emergentes por operativo (durante el operativo) | manual | 5d | 2026-05-18 | 2026-05-22 |  | equipo de cartografía |
| 38 | 5.9 | evaluación de la información cartografica | manual | 2d | 2026-05-25 | 2026-05-26 |  | equipo de cartografía |
| 39 | 6 | **FASE VI - CENSO PILOTO (3 comunidades a nivel Nacional)** |  | 33d | 2026-03-09 | 2026-04-22 |  | Abraham-Ronald-David-Reynaldo-Sergio-Cesar-Mauricio |
| 40 | 6.1 | Elección de Comunidades | manual | 4d | 2026-03-17 | 2026-03-20 |  | equipo de cartografía-operativo de campo-tematica |
| 41 | 6.2 | generación de esquema y tablas | manual | 1d | 2026-03-23 | 2026-03-23 |  | equipo de cartografía |
| 42 | 6.3 | generación de sectores y areas censales (area dispersa) | manual | 5d | 2026-03-24 | 2026-03-30 |  | equipo de cartografía |
| 43 | 6.4 | generación de sectores y areas censales (area amanzanada) | manual | 5d | 2026-03-24 | 2026-03-30 |  | equipo de cartografía |
| 44 | 6.5 | decarga de imágenes | manual | 5d | 2026-03-24 | 2026-03-30 |  | equipo de cartografía |
| 45 | 6.6 | solicitud emergentes por operativo (pre - operativo) | manual | 2d | 2026-03-31 | 2026-04-01 |  | equipo de cartografía |
| 46 | 6.7 | seguimiento de la informacion cartografica | manual | 9d | 2026-04-10 | 2026-04-22 |  | equipo de cartografía |
| 47 | 6.8 | solicitud emergentes por operativo (durante el operativo) | manual | 9d | 2026-04-10 | 2026-04-22 |  | equipo de cartografía |
| 48 | 6.9 | evaluación de la información cartografica | manual | 2d | 2026-04-21 | 2026-04-22 |  | equipo de cartografía |
| 49 | 7 | **FASE VI - Pruebas Departamentales** |  | 37d | 2026-03-25 | 2026-05-14 | 0d | Abraham-Ronald-David-Reynaldo-Sergio-Cesar-Mauricio |
| 50 | 7.1 | Elección de areas de estudio | manual | 4d | 2026-03-25 | 2026-03-30 |  | equipo de cartografía-operativo de campo-tematica |
| 51 | 7.2 | generación de esquema y tablas | manual | 1d | 2026-03-31 | 2026-03-31 |  | equipo de cartografía |
| 52 | 7.3 | generación de sectores y areas censales (area dispersa) | manual | 10d | 2026-04-01 | 2026-04-14 |  | equipo de cartografía |
| 53 | 7.4 | generación de sectores y areas censales (area amanzanada) | manual | 10d | 2026-04-01 | 2026-04-14 |  | equipo de cartografía |
| 54 | 7.5 | decarga de imágenes | manual | 10d | 2026-04-01 | 2026-04-14 |  | equipo de cartografía |
| 55 | 7.6 | solicitud emergentes por operativo (pre - operativo) | manual | 3d | 2026-04-15 | 2026-04-17 |  | equipo de cartografía |
| 56 | 7.7 | seguimiento de la informacion cartografica | manual | 13d | 2026-04-27 | 2026-05-13 |  | equipo de cartografía |
| 57 | 7.8 | solicitud emergentes por operativo (durante el operativo) | manual | 13d | 2026-04-27 | 2026-05-13 |  | equipo de cartografía |
| 58 | 7.9 | evaluación de la información cartografica | manual | 2d | 2026-05-13 | 2026-05-14 |  | equipo de cartografía |

| ID | WBS | Task | Type | Duration | Start | Finish | Complete | Remaining | Total slack | Responsables |
| --- | --- | --- | --- | --- | --- | --- | --- | --- | --- | --- |
| 59 | 8 | **FASE VII - DESCARGA DE IMÁGENES SATELITALES (Mbtiles)** |  | 99d | 2026-02-20 | 2026-07-08 |  |  |  | Angela - Gabriela |
| 60 | 8.1 | Analisis de descarga y herramientas | manual | 21d | 2026-02-20 | 2026-03-20 |  |  |  | equipo de cartografía |
| 61 | 8.2 | Documentacion y manuales de descarga | manual | 5d | 2026-03-23 | 2026-03-27 |  |  |  | equipo de cartografía |
| 62 | 8.3 | Capacitacion y cronograma de descarga | manual | 1d | 2026-06-01 | 2026-06-01 |  |  |  | equipo de cartografía |
| 63 | 8.4 | Descarga de imágenes satelitales (Mbtiles) FASE 1 | manual | 15d | 2026-06-02 | 2026-06-22 |  |  |  | equipo de cartografía |
| 64 | 8.5 | Revision y descarga complementaria de Imágenes Satelitales | manual | 15d | 2026-06-04 | 2026-06-24 |  |  |  | equipo de cartografía |
| 65 | 8.6 | Descarga de imágenes satelitales (Mbtiles) FASE 2 | manual | 12d | 2026-06-23 | 2026-07-08 |  |  |  | equipo de cartografía |
| 66 | 9 | **FASE VIII - Construcción de Areas Censales y Sectores CI-CC-CP Mayores A 500 viv.** |  | 41d | 2026-02-27 A | 2026-04-24 | 17% | 33.94d | 0d | Cesar- Sergio - Mauricio |
| 67 | 9.1 | Análisis Metodológico Con Operativo De Campo-Tematica y Coordinación | manual | 21d | 2026-02-27 A | 2026-03-27 | 57% | 9d |  | equipo de cartografía |
| 68 | 9.2 | Identificación inicial de productores (CPV 2024) | manual | 21d | 2026-02-27 A | 2026-03-27 | 26% | 15.6d |  | equipo de cartografía |
| 69 | 9.3 | Depuración de registros de Unidades Productivas | manual | 19d | 2026-03-03 | 2026-03-27 |  |  |  | equipo de cartografía |
| 70 | 9.4 | Definición del tipo de intervención operativa (con las departamentales) | manual | 20d | 2026-03-23 | 2026-04-17 |  |  |  | equipo de cartografía |
| 71 | 9.5 | Delimitación espacial areas conurbanas periurbanas en ciudades capitales | manual | 7d | 2026-03-30 | 2026-04-07 |  |  |  | equipo de cartografía |
| 72 | 9.6 | Construcción de Áreas Censales y Sectores | manual | 10d | 2026-04-08 | 2026-04-21 |  |  |  | equipo de cartografía |
| 73 | 9.7 | Control de Calidad | manual | 3d | 2026-04-22 | 2026-04-24 |  |  |  | equipo de cartografía |
| 74 | 10 | **FASE IX - Generación Información APA Nacional (Formulario F1)** |  | 35d | 2026-03-09 | 2026-04-24 |  |  | 0d | Cesar- Sergio - Mauricio -Abraham-Ronald-David |
| 75 | 10.1 | Control y Seguimiento información F1 | manual | 25d | 2026-03-09 | 2026-04-10 |  |  |  | equipo de cartografía |
| 76 | 10.2 | Proceso de homologación y validación de comunidades con base en el Formulario 1 y registros del CPV | manual | 26d | 2026-03-16 | 2026-04-20 |  |  |  | equipo de cartografía |
| 77 | 10.3 | Análisis territorial comunidades no emparejadas | manual | 25d | 2026-03-23 | 2026-04-24 |  |  |  | equipo de cartografía |
| 78 | 11 | **FASE X - Construcción de Areas Censales, Sectores Y Areas de Trabajo** |  | 46d | 2026-03-02 | 2026-05-04 |  |  |  | Abraham-Ronald-David |
| 79 | 11.1 | Definición de parámetros operativos para la conformación de sectores y áreas censales en áreas dispersas | manual | 15d | 2026-03-02 | 2026-03-20 |  |  |  | equipo de cartografía |
| 80 | 11.2 | Análisis de proximidad geográfica de APAs | manual | 11d | 2026-03-17 | 2026-03-31 |  |  |  | equipo de cartografía |
| 81 | 11.3 | Generación de Areas Censales,sectores y Areas de Trabajo (La Paz, Pando) | manual | 6d | 2026-04-01 | 2026-04-08 |  |  |  | equipo de cartografía |
| 82 | 11.4 | Generación de Areas Censales,sectores y Areas de Trabajo (Santa Cruz, Beni) | manual | 7d | 2026-04-09 | 2026-04-17 |  |  |  | equipo de cartografía |
| 83 | 11.5 | Generación de Areas Censales,sectores y Areas de Trabajo (Cochabamba, Chuquisaca) | manual | 7d | 2026-04-20 | 2026-04-28 |  |  |  | equipo de cartografía |
| 84 | 11.6 | Generación de Areas Censales,sectores y Areas de Trabajo (Potosi, Oruro, Tarija) | manual | 4d | 2026-04-29 | 2026-05-04 |  |  |  | equipo de cartografía |
| 85 | 11.7 | Control de calidad de Areas Censales,Sectores y Areas de Trabajo | manual | 24d | 2026-04-01 | 2026-05-04 |  |  |  | equipo de cartografía |

| ID | WBS | Task | Type | Duration | Start | Finish | Total slack | Responsables |
| --- | --- | --- | --- | --- | --- | --- | --- | --- |
| 86 | 12 | **FASE XI - Validación Departamental** |  | 33d | 2026-04-08 | 2026-05-22 |  | Reynaldo |
| 87 | 12.1 | Validación y Ajustes con equipos departamentales (La Paz, Pando) | manual | 11d | 2026-04-08 | 2026-04-22 |  | equipo de cartografía |
| 88 | 12.2 | Validación y Ajustes con equipos departamentales (Santa Cruz, Beni) | manual | 8d | 2026-04-23 | 2026-05-04 |  | equipo de cartografía |
| 89 | 12.3 | Validación y Ajustes con equipos departamentales (Cochabamba, Chuquisaca) | manual | 7d | 2026-05-05 | 2026-05-13 |  | equipo de cartografía |
| 90 | 12.4 | Validación y Ajustes con equipos departamentales (Potosi, Oruro, Tarija) | manual | 7d | 2026-05-14 | 2026-05-22 |  | equipo de cartografía |
| 91 | 13 | **FASE XII - Preparación de Muestras para la Clasificación de Cultivos** |  | 85d | 2026-04-06 | 2026-07-31 | 0d | equipo de cartografía |
| 92 | 13.1 | Solicitud de Muestras de entidades cabeza de sector | manual | 41d | 2026-04-06 | 2026-06-01 |  | Especialistas-equipo de cartografía |
| 93 | 13.2 | Analisis y Categorización de Banco de Muestras | manual | 15d | 2026-06-08 | 2026-06-26 |  | Especialistas-equipo de cartografía |
| 94 | 13.3 | levantamiento de muestras de entrenamiento en gabinete | manual | 15d | 2026-06-29 | 2026-07-17 |  | Especialistas-equipo de cartografía |
| 95 | 13.4 | Procedimiento y evaluación de cultivos priorizados (firmas espectrales) | manual | 10d | 2026-07-20 | 2026-07-31 |  | Especialistas-equipo de cartografía |
| 97 | 14 | **FASE I ANALISIS Y SEGUIMIENTO GEOGRAFICO** |  | 102d | 2026-07-01 | 2026-11-19 | 0d |  |
| 98 | 14.1 | análisis preliminar de información proveniente de campo | manual | 18d | 2026-07-01 | 2026-07-24 |  | Especialistas-equipo de cartografía |
| 99 | 14.2 | Seguimiento cartográfico durante el operativo de campo | manual | 70d | 2026-08-15 | 2026-11-19 |  | Especialistas-equipo de cartografía |
| 101 | 15 | **FASE I Actualización de datos cartograficos** |  | 64d | 2026-10-05 | 2026-12-31 | 0d |  |
| 102 | 15.1 | validacion y consolidacion post operativo | manual | 34d | 2026-10-05 | 2026-11-19 |  | Especialistas-equipo de cartografía |
| 103 | 15.2 | Actualización cartografica de Parcelas y Puntos de UPAS (Cultivos Priorizados) | manual | 59d | 2026-10-12 | 2026-12-31 |  | Especialistas-equipo de cartografía |
| 104 | 16 | **FASE II Analisis con Imágenes Satelitales** |  | 94d | 2026-08-24 | 2026-12-31 | 0d |  |
| 105 | 16.1 | limpieza y depuración de muestras de campo de la boleta censal | manual | 65d | 2026-08-24 | 2026-11-20 |  | Especialistas-equipo de cartografía |
| 106 | 16.2 | clasificacion supervisada de imágenes satelitales (area cultivada y no cultivada) | manual | 29d | 2026-11-23 | 2026-12-31 |  | Especialistas-equipo de cartografía |
| 107 | 16.3 | Analisis de productos agropecuarios priorizados | manual | 43d | 2026-11-03 | 2026-12-31 |  | Especialistas-equipo de cartografía |
| 108 | 17 | **FASE III Generación del Marco Maestro Muestral** |  | 109d | 2026-12-01 | 2027-04-30 | 0d |  |
| 109 | 17.1 | Definición de parámetros operativos y ajuste técnico de UPM (trabajo conjunto con Muestreo) | manual | 18d | 2026-12-01 | 2026-12-24 |  | Especialistas-equipo de cartografía |
| 110 | 17.2 | Integración de base censal validada para diseño muestral | manual | 8d | 2027-01-04 | 2027-01-13 |  | Especialistas-equipo de cartografía |
| 111 | 17.3 | Creación de Unidades Primarias de Muestreo (UPM) | manual | 64d | 2027-01-14 | 2027-04-13 |  | Especialistas-equipo de cartografía |
| 112 | 17.4 | Generación de documentación técnica del Marco Maestro Muestral | manual | 23d | 2027-03-31 | 2027-04-30 |  | Especialistas-equipo de cartografía |
